# Lịch sách dành cho trẻ em

Schedule from MS Project, 2012-04-09 to 2015-11-26, costs in $.
Lucerne Publishing

## Calendars

- Standard: Mon-Fri 08:00-12:00, 13:00-17:00; Sat-Sun off.
- Monday-Wednesday: Mon-Wed 08:00-12:00, 13:00-17:00; Thu-Sun off.

## Resources

| Resource | Group | Unit | Rate |
| --- | --- | --- | --- |
| Carole Poland | Editorial |  | 52.5 |
| Copyeditors | Editorial |  | 45 |
| Dan Jump | Design |  | 75.5 |
| Hany Morcos | Editorial |  | 38.75 |
| Jane Dow | Editorial |  | 63.25 |
| Jun Cao | Editorial |  | 42 |
| Luis Sousa | Design |  | 70 |
| Printing Service | Production |  |  |
| Travel | Other |  |  |
| Tad Orman | Other |  |  |
| Color Setting Services | Production |  |  |
| Bound galley proofs | Production | copies | 15 |

## Schedule

| ID | WBS | Task | Type | Duration | Start | Finish | Predecessors | Baseline start | Baseline finish | Baseline duration | Total slack | Constraint | Deadline | Resources | Work | Cost | Baseline cost | Editorial Focus |
| --- | --- | --- | --- | --- | --- | --- | --- | --- | --- | --- | --- | --- | --- | --- | --- | --- | --- | --- |
| 1 | 1 | **Họp nhân viên biên tập** |  | 60.12d | 2012-04-09 | 2012-07-02 |  | 2012-04-09 | 2012-07-02 | 60.12d | 888.75d |  |  |  | 45.5h | 2,223 | 2,223 |  |
| 2 | 1.1 | Editorial staff meeting 1 |  | 1h | 2012-04-09 | 2012-04-09 |  | 2012-04-09 | 2012-04-09 | 1h | 948.75d | start no earlier than 2012-04-09 |  | Carole Poland; Jun Cao; Hany Morcos; Dan Jump [50%] | 3.5h | 171 | 171 |  |
| 3 | 1.2 | Editorial staff meeting 2 |  | 1h | 2012-04-16 | 2012-04-16 |  | 2012-04-16 | 2012-04-16 | 1h | 943.75d | start no earlier than 2012-04-16 |  | Carole Poland; Jun Cao; Hany Morcos; Dan Jump [50%] | 3.5h | 171 | 171 |  |
| 4 | 1.3 | Editorial staff meeting 3 |  | 1h | 2012-04-23 | 2012-04-23 |  | 2012-04-23 | 2012-04-23 | 1h | 938.75d | start no earlier than 2012-04-23 |  | Carole Poland; Jun Cao; Hany Morcos; Dan Jump [50%] | 3.5h | 171 | 171 |  |
| 5 | 1.4 | Editorial staff meeting 4 |  | 1h | 2012-04-30 | 2012-04-30 |  | 2012-04-30 | 2012-04-30 | 1h | 933.75d | start no earlier than 2012-04-30 |  | Carole Poland; Jun Cao; Hany Morcos; Dan Jump [50%] | 3.5h | 171 | 171 |  |
| 6 | 1.5 | Editorial staff meeting 5 |  | 1h | 2012-05-07 | 2012-05-07 |  | 2012-05-07 | 2012-05-07 | 1h | 928.75d | start no earlier than 2012-05-07 |  | Carole Poland; Jun Cao; Hany Morcos; Dan Jump [50%] | 3.5h | 171 | 171 |  |
| 7 | 1.6 | Editorial staff meeting 6 |  | 1h | 2012-05-14 | 2012-05-14 |  | 2012-05-14 | 2012-05-14 | 1h | 923.75d | start no earlier than 2012-05-14 |  | Carole Poland; Jun Cao; Hany Morcos; Dan Jump [50%] | 3.5h | 171 | 171 |  |
| 8 | 1.7 | Editorial staff meeting 7 |  | 1h | 2012-05-21 | 2012-05-21 |  | 2012-05-21 | 2012-05-21 | 1h | 918.75d | start no earlier than 2012-05-21 |  | Carole Poland; Jun Cao; Hany Morcos; Dan Jump [50%] | 3.5h | 171 | 171 |  |
| 9 | 1.8 | Editorial staff meeting 8 |  | 1h | 2012-05-28 | 2012-05-28 |  | 2012-05-28 | 2012-05-28 | 1h | 913.75d | start no earlier than 2012-05-28 |  | Carole Poland; Jun Cao; Hany Morcos; Dan Jump [50%] | 3.5h | 171 | 171 |  |
| 10 | 1.9 | Editorial staff meeting 9 |  | 1h | 2012-06-04 | 2012-06-04 |  | 2012-06-04 | 2012-06-04 | 1h | 908.75d | start no earlier than 2012-06-04 |  | Carole Poland; Jun Cao; Hany Morcos; Dan Jump [50%] | 3.5h | 171 | 171 |  |
| 11 | 1.10 | Editorial staff meeting 10 |  | 1h | 2012-06-11 | 2012-06-11 |  | 2012-06-11 | 2012-06-11 | 1h | 903.75d | start no earlier than 2012-06-11 |  | Carole Poland; Jun Cao; Hany Morcos; Dan Jump [50%] | 3.5h | 171 | 171 |  |
| 12 | 1.11 | Editorial staff meeting 11 |  | 1h | 2012-06-18 | 2012-06-18 |  | 2012-06-18 | 2012-06-18 | 1h | 898.75d | start no earlier than 2012-06-18 |  | Carole Poland; Jun Cao; Hany Morcos; Dan Jump [50%] | 3.5h | 171 | 171 |  |
| 13 | 1.12 | Editorial staff meeting 12 |  | 1h | 2012-06-25 | 2012-06-25 |  | 2012-06-25 | 2012-06-25 | 1h | 893.75d | start no earlier than 2012-06-25 |  | Carole Poland; Jun Cao; Hany Morcos; Dan Jump [50%] | 3.5h | 171 | 171 |  |
| 14 | 1.13 | Editorial staff meeting 13 |  | 1h | 2012-07-02 | 2012-07-02 |  | 2012-07-02 | 2012-07-02 | 1h | 888.75d | start no earlier than 2012-07-02 |  | Carole Poland; Jun Cao; Hany Morcos; Dan Jump [50%] | 3.5h | 171 | 171 |  |
| 15 | 2 | **Sự tiếp nhận** |  | 35.5d | 2015-04-06 | 2015-05-25 |  | 2015-04-06 | 2015-05-25 | 35.5d | 0d |  |  |  | 444h | 18,264 | 18,264 |  |
| 16 | 2.1 | Nhận bản thảo | milestone | 0d | 2015-04-06 | 2015-04-06 |  | 2015-04-06 | 2015-04-06 | 0d | 0d |  |  |  |  |  |  |  |
| 17 | 2.2 | Biên tập nội dung |  | 15d | 2015-04-06 | 2015-04-30 | 16 | 2015-04-06 | 2015-04-30 | 15d | 0d |  |  | Carole Poland | 120h | 6,300 | 6,300 | Full developmental edit |
| 18 | 2.3 | Đánh giá tác phẩm gốc |  | 10.25d | 2015-04-23 | 2015-05-07 | 17FS-5d | 2015-04-23 | 2015-05-07 | 10.25d | 0d |  |  | Hany Morcos; Jane Dow | 164h | 8,364 | 8,364 |  |
| 19 | 2.4 | Đánh giá của tác giả về nội dung biên tập |  | 12d | 2015-05-07 | 2015-05-25 | 17, 18 | 2015-05-07 | 2015-05-25 | 12d | 0d |  |  | Tad Orman; Copyeditors | 160h | 3,600 | 3,600 | Incorp must-fix issues |
| 20 | 2.5 | Bàn giao cho bộ phận biên tập | milestone | 0d | 2015-05-25 | 2015-05-25 | 19 | 2015-05-25 | 2015-05-25 | 0d | 0d |  | 2015-05-29 | Carole Poland |  |  |  |  |
| 21 | 3 | **Biên tập** |  | 29.12d | 2015-05-25 | 2015-07-03 | 15 | 2015-05-25 | 2015-07-03 | 29.12d | 0d |  |  |  | 400h | 15,670 | 15,670 |  |
| 22 | 3.1 | Sắp xếp bản thảo cho bản sao |  | 5.12d | 2015-05-25 | 2015-06-01 |  | 2015-05-25 | 2015-06-01 | 5.12d | 0d |  |  | Hany Morcos; Dan Jump [50%] | 60h | 3,060 | 3,060 | Address outstanding line edit issues |
| 23 | 3.2 | Bản sao |  | 11.25d | 2015-06-01 | 2015-06-16 | 22 | 2015-06-01 | 2015-06-16 | 11.25d | 0d |  |  | Copyeditors [200%] | 180h | 8,100 | 8,100 | Style Guide compliance |
| 24 | 3.3 | Đánh giá tác giả về bản sao |  | 10d | 2015-06-16 | 2015-06-30 | 23 | 2015-06-16 | 2015-06-30 | 10d | 0d |  |  | Tad Orman; Copyeditors [25%] | 100h | 900 | 900 | Incorp must-fix issues |
| 25 | 3.4 | Kết hợp bản sao |  | 5.12d | 2015-06-26 | 2015-07-03 | 24FS-2.5% | 2015-06-26 | 2015-07-03 | 5.12d | 0d |  |  | Carole Poland; Dan Jump [50%] | 60h | 3,610 | 3,610 | Incorp must-fix issues |
| 26 | 3.5 | Bàn giao cho bộ phận sản xuất | milestone | 0d | 2015-07-03 | 2015-07-03 | 25 | 2015-07-03 | 2015-07-03 | 0d | 0d |  |  | Hany Morcos |  |  |  |  |

| ID | WBS | Task | Type | Duration | Start | Finish | Predecessors | Baseline start | Baseline finish | Baseline duration | Total slack | Free slack | Constraint | Calendar | Resources | Work | Cost | Baseline cost |
| --- | --- | --- | --- | --- | --- | --- | --- | --- | --- | --- | --- | --- | --- | --- | --- | --- | --- | --- |
| 27 | 4 | **Thiết kế và sản xuất** |  | 58.25d | 2015-07-03 | 2015-09-23 | 21 | 2015-07-03 | 2015-09-23 | 58.25d | 0d |  |  |  |  | 888h | 46,679 | 46,679 |
| 28 | 4.1 | Thiết lập trang |  | 15d | 2015-07-03 | 2015-07-24 |  | 2015-07-03 | 2015-07-24 | 15d | 0d |  |  |  | Jane Dow | 120h | 7,590 | 7,590 |
| 29 | 4.2 | Dàn trang |  | 15.25d | 2015-07-03 | 2015-07-24 | 28SS | 2015-07-03 | 2015-07-24 | 15.25d | 0d |  |  |  | Luis Sousa; Hany Morcos | 240h | 13,050 | 13,050 |
| 30 | 4.3 | **Thiết kế minh họa nội dung** |  | 30d | 2015-07-24 | 2015-09-04 | 29 | 2015-07-24 | 2015-09-04 | 30d | 0d |  |  |  |  | 320h | 13,860 | 13,860 |
| 31 | 4.3.1 | Duyệt trang lần 1 |  | 10d | 2015-07-24 | 2015-08-07 |  | 2015-07-24 | 2015-08-07 | 10d | 0d |  | start no earlier than 2015-07-17 |  | Tad Orman; Copyeditors | 100h | 900 | 900 |
| 32 | 4.3.2 | Hiệu đính và lập chỉ mục |  | 10d | 2015-08-07 | 2015-08-21 | 31 | 2015-08-07 | 2015-08-21 | 10d | 0d |  |  |  | Hany Morcos; Dan Jump [50%] | 120h | 6,120 | 6,120 |
| 33 | 4.3.3 | Tích hợp góp ý duyệt trang lần 1 | milestone | 0d | 2015-08-21 | 2015-08-21 | 32 | 2015-08-21 | 2015-08-21 | 0d | 0d |  |  |  | Hany Morcos |  |  |  |
| 34 | 4.3.4 | Gửi trang đã hiệu đính cho Sản Xuất |  | 5d | 2015-08-21 | 2015-08-28 | 33 | 2015-08-21 | 2015-08-28 | 5d | 0d |  |  |  | Jane Dow; Dan Jump [50%] | 60h | 4,040 | 4,040 |
| 35 | 4.3.5 | Nhập chỉnh sửa trang và chỉ mục |  | 5d | 2015-08-28 | 2015-09-04 | 34 | 2015-08-28 | 2015-09-04 | 5d | 0d |  |  |  | Luis Sousa | 40h | 2,800 | 2,800 |
| 36 | 4.4 | **Thiết kế bìa** |  | 13d | 2015-09-04 | 2015-09-23 |  | 2015-09-04 | 2015-09-23 | 13d | 0d |  |  |  |  | 120h | 6,345 | 6,345 |
| 37 | 4.4.1 | Duyệt trang lần 2 |  | 6.5d | 2015-09-04 | 2015-09-15 | 35 | 2015-09-04 | 2015-09-15 | 6.5d | 0d |  |  |  | Hany Morcos | 40h | 1,800 | 1,800 |
| 38 | 4.4.2 | Hiệu đính và duyệt | milestone | 0d | 2015-09-15 | 2015-09-15 | 37 | 2015-09-15 | 2015-09-15 | 0d | 0d |  |  |  | Hany Morcos |  |  |  |
| 39 | 4.4.3 | Gửi trang đã hiệu đính cho Sản Xuất |  | 5d | 2015-09-16 | 2015-09-23 | 38 | 2015-09-16 | 2015-09-23 | 5d | 0d |  |  |  | Jane Dow; Hany Morcos [50%]; Carole Poland [50%]; Bound galley proofs [20 copies] | 80h | 4,545 | 4,545 |
| 40 | 4.5 | **Duyệt lần cuối** |  | 10d | 2015-09-04 | 2015-09-18 | 30 | 2015-09-04 | 2015-09-18 | 10d | 3d |  |  |  |  | 88h | 5,834 | 5,834 |
| 41 | 4.5.1 | Thiết kế website đi kèm sách |  | 4.5d | 2015-09-04 | 2015-09-16 |  | 2015-09-04 | 2015-09-16 | 4.5d | 3d | 0d |  |  | Luis Sousa; Hany Morcos | 48h | 2,610 | 2,610 |
| 42 | 4.5.2 | Tạo bản mockup |  | 2d | 2015-09-16 | 2015-09-18 | 41 | 2015-09-16 | 2015-09-18 | 2d | 3d |  |  |  | Luis Sousa; Tad Orman; Travel [0.1%]; Dan Jump [50%] | 40h | 3,224 | 3,224 |
| 43 | 5 | **Duyệt cùng tác giả** |  | 46d | 2015-09-23 | 2015-11-26 | 40 | 2015-09-23 | 2015-11-26 | 46d | 0d |  |  |  |  | 328h | 5,310 | 5,310 |
| 44 | 5.1 | Chuẩn bị màu và in ấn |  | 1d | 2015-09-23 | 2015-09-28 | 36 | 2015-09-23 | 2015-09-28 | 1d | 0d |  |  | Monday-Wednesday | Hany Morcos | 8h | 310 | 310 |
| 45 | 5.2 | Gửi tới nhà in màu |  | 10d | 2015-09-28 | 2015-10-12 | 44 | 2015-09-28 | 2015-10-12 | 10d | 0d |  |  |  | Color Setting Services | 80h | 5,000 | 5,000 |
| 46 | 5.3 | Tạo bản in thử |  | 30d | 2015-10-15 | 2015-11-26 | 45FS+3d | 2015-10-15 | 2015-11-26 | 30d | 0d |  |  |  | Printing Service | 240h |  |  |
| 47 | 6 | **In và giao hàng** |  | 147.88d? | 2015-04-06 | 2015-10-28 |  | 2015-04-06 | 2015-10-28 | 147.88d? | 21d |  |  |  |  | 212h | 9,442 | 9,442 |
| 48 | 6.1 | Chuẩn Bị Ra Mắt Sách |  | 5d | 2015-09-28 | 2015-10-05 | 44 | 2015-09-28 | 2015-10-05 | 5d | 21d | 0d |  |  | Carole Poland [50%]; Jane Dow | 36h | 2,062 | 2,062 |
| 49 | 6.2 | Lập kế hoạch ra mắt |  | 1d | 2015-10-05 | 2015-10-06 | 48 | 2015-10-05 | 2015-10-06 | 1d | 21d | 0d |  |  | Carole Poland | 8h | 420 | 420 |
| 50 | 6.3 | Phân công các thành viên trong nhóm ra mắt |  | 5d | 2015-10-06 | 2015-10-13 | 49 | 2015-10-06 | 2015-10-13 | 5d | 21d | 0d |  |  | Hany Morcos; Tad Orman; Travel [0.1%] | 80h | 3,550 | 3,550 |
| 51 | 6.4 | Hoàn thành bảng câu hỏi tác giả |  | 1d | 2015-10-13 | 2015-10-14 | 50 | 2015-10-13 | 2015-10-14 | 1d | 21d | 0d |  |  | Hany Morcos | 8h | 310 | 310 |
| 52 | 6.5 | Lên lịch phỏng vấn tác giả |  | 10d | 2015-10-14 | 2015-10-28 | 51 | 2015-10-14 | 2015-10-28 | 10d | 21d |  |  |  | Hany Morcos | 80h | 3,100 | 3,100 |
| 53 | 6.6 | Thiết kế và đặt hàng tài liệu marketing |  | 1d? | 2015-04-06 | 2015-04-06 |  | 2015-04-06 | 2015-04-06 | 1d? | 167.88d |  |  |  |  |  |  |  |
